# eht

Schedule from MS Project, 2020-05-10 to 2024-12-31.

## Calendars

- Standard: Mon-Fri 08:00-12:00, 13:00-17:00; Sat-Sun off.

## Schedule

| ID | WBS | Task | Type | Duration | Start | Finish | Predecessors | Total slack | Free slack | Constraint |
| --- | --- | --- | --- | --- | --- | --- | --- | --- | --- | --- |
| 6 | 1 | Convergentiefase gereed | milestone | 0d | 2021-08-02 | 2021-08-02 |  | 891d |  | start no earlier than 2021-08-02 |
| 7 | 2 | Bereikbaarheidsmaatregelen, conform vraagspecificatie Eisen REHT gereed | milestone | 0d | 2023-01-02 | 2023-01-02 |  | 521d |  | start no earlier than 2023-01-02 |
| 8 | 3 | Omgevingsvergunning MTK ‘1e Heinenoordtunnel ‘verkregen | milestone | 0d | 2023-03-31 | 2023-03-31 |  | 457d |  | start no earlier than 2023-03-31 |
| 9 | 4 | Ingebruikname MTK als vluchtroute (=einde fase 2 ombouw) | milestone | 0d | 2023-08-28 | 2023-08-28 |  | 351d |  | start no earlier than 2023-08-28 |
| 10 | 5 | Integrale Site acceptance Test (ISAT) | milestone | 0d | 2024-04-01 | 2024-04-01 |  | 196d |  | start no earlier than 2024-04-01 |
| 11 | 6 | Openstelling tunnel na renovatie (=einde fase 4 ombouw) | milestone | 0d | 2024-08-12 | 2024-08-12 |  | 101d |  | start no earlier than 2024-08-12 |
| 12 | 7 | Oplevering Werk | milestone | 0d | 2024-12-31 | 2024-12-31 |  | 0d |  | start no earlier than 2024-12-31 |
| 14 | 8 | Opdrachtverlening | milestone | 0d | 2020-05-10 | 2020-05-10 |  | 1166d | 0d |  |
| 15 | 9 | uitvoeringswerkzaamheden |  | 30d | 2021-04-12 | 2021-05-21 |  | 941d | 0d | start no earlier than 2021-04-12 |
| 16 | 10 | **Projectmanagement** |  | 218d | 2020-05-20 | 2021-03-19 |  | 986d |  |  |
| 17 | 10.1 | Volmacht van vertegenwoordiger van de Opdrachtnemer alsmede die van diens vervanger |  | 7d | 2020-05-20 | 2020-05-28 | 14FS+7d | 1197d |  |  |
| 18 | 10.2 | Projectmanagementplan |  | 10d | 2020-05-25 | 2020-06-05 | 14FS+10d | 1191d |  |  |
| 19 | 10.3 | Alle plannen cq. procesbeschrijvingen onderliggend aan het projectmanagementplan |  | 15d | 2020-06-08 | 2020-06-26 | 14FS+20d | 1176d |  |  |
| 20 | 10.4 | Procesbeschrijving Integraal veiligheidsmanagement, (w.o. V&G-plannen) |  | 15d | 2021-03-01 | 2021-03-19 | 15SS-30d | 986d |  |  |
| 21 | 10.5 | Procesbeschrijving calamiteiten |  | 15d | 2021-03-01 | 2021-03-19 | 14FS+30d, 15SS-30d | 986d |  |  |
| 22 | 11 | **Projectbeheersing** |  | 0d | 2020-05-10 | 2020-05-10 |  | 1211d |  |  |
| 23 | 11.1 | Planning, inclusief geplande weekend en weekafsluitingen | milestone | 0d | 2020-05-10 | 2020-05-10 |  | 1211d |  |  |
